# metric-sys-wbs

Schedule from MS Project, 2020-05-25 to 2020-05-28.

## Calendars

- 标准: Mon-Fri 08:00-12:00, 13:00-17:00; Sat-Sun off.

## Resources

| Resource |
| --- |
| 魏亚远 |
| 肖燏 |

## Schedule

| ID | Task | Type | Duration | Start | Finish | Predecessors | Total slack | Constraint | Resources | Work |
| --- | --- | --- | --- | --- | --- | --- | --- | --- | --- | --- |
| 1 | Web应用技术架构选型 |  | 2d | 2020-05-26 | 2020-05-27 |  | 0d | start no earlier than 2020-05-26 | 肖燏 [30%]; 魏亚远 | 12.8h |
| 2 | 确定前端页面样式规范 | manual | 1d? | 2020-05-25 | 2020-05-25 |  |  | finish no earlier than 2020-05-28 |  |  |
| 3 | 完成物理数据模型 |  | 3d | 2020-05-26 | 2020-05-28 |  | 0d | finish no earlier than 2020-05-28 | 肖燏 [50%] | 12h |
| 4 | 搭建Web应用开发环境 |  | 1d? | 2020-05-28 | 2020-05-28 | 1 | 0d |  | 魏亚远 | 8h |
